# 总进度

How a schedule from a web Gantt chart changed from version to version. A marks actual dates.

## Version 1 (saved 2024-08-08)

| ID | Task | Duration | Start | Finish | Complete |
| --- | --- | --- | --- | --- | --- |
| 2 | 投标 | 8d | 2024-06-05 | 2024-06-12 | 100% |
| 3 | 合同签订 | 16d | 2024-06-13 | 2024-06-28 | 100% |
| 4 | 项目启动 | 11d | 2024-06-15 | 2024-06-25 | 100% |
| 5 | 需求分析 | 11d | 2024-06-15 | 2024-06-25 |  |
| 6 | 方案设计确认 | 20d | 2024-06-21 | 2024-07-10 |  |
| 7 | 设备采购 | 12d | 2024-06-24 | 2024-07-05 |  |
| 8 | 设备到货 | 33d | 2024-06-28 | 2024-07-30 |  |
| 9 | 首站定标 | 6d | 2024-07-01 | 2024-07-06 |  |
| 10 | 塔体改造 | 30d | 2024-07-01 | 2024-07-30 |  |
| 11 | 设备安装 | 41d | 2024-07-01 | 2024-08-10 |  |
| 12 | 线路施工 | 20d | 2024-07-01 | 2024-07-20 |  |
| 13 | 平台部署 | 11d | 2024-07-10 | 2024-07-20 |  |
| 14 | 系统整体调试 | 27d | 2024-07-20 | 2024-08-15 |  |
| 15 | 项目初验 | 31d | 2024-08-16 | 2024-09-15 |  |
| 16 | 试运行 | 31d | 2024-09-15 | 2024-10-15 |  |
| 17 | 项目终验 | 16d | 2024-10-16 | 2024-10-31 |  |
| 18 | 竣工文档移交 | 10d | 2024-11-01 | 2024-11-10 |  |
| 19 | 回款 | 30d | 2024-11-01 | 2024-11-30 |  |

## Version 2 (saved 2024-08-08)

Last finish 2024-11-30 → 2024-09-09 (-82d). Complete tasks 3 → 8.

Added:

| ID | Task | Duration | Start | Finish |
| --- | --- | --- | --- | --- |
| 13 | 平台上线 | 38d | 2024-07-25 | 2024-08-31 |

Removed: 16 试运行; 17 项目终验; 18 竣工文档移交; 19 回款

Changed:

| ID | Task | Start | Finish | Duration | Complete |
| --- | --- | --- | --- | --- | --- |
| 5 | 需求分析 |  |  |  | 0% → 100% |
| 6 | 方案设计确认 |  |  |  | 0% → 100% |
| 7 | 设备采购 | 2024-06-24 → 2024-06-08 (-16d) | 2024-07-05 → 2024-07-29 (+24d) | 12d → 52d | 0% → 100% |
| 8 | 设备到货 | 2024-06-28 → 2024-06-25 (-3d) | 2024-07-30 → 2024-07-29 (-1d) | 33d → 35d | 0% → 100% |
| 9 | 首站定标 |  |  |  | 0% → 100% |
| 10 | 塔体改造 | 2024-07-01 → 2024-07-03 (+2d) | 2024-07-30 → 2024-08-27 (+28d) | 30d → 56d | 0% → 40% |
| 11 | 设备安装 | 2024-07-01 → 2024-07-03 (+2d) | 2024-08-10 → 2024-08-28 (+18d) | 41d → 57d | 0% → 22% |
| 12 | 线路施工 | 2024-07-01 → 2024-07-24 (+23d) | 2024-07-20 → 2024-08-29 (+40d) | 20d → 37d | 0% → 26% |
| 14 | 平台部署 |  | 2024-07-20 → 2024-08-20 (+31d) | 11d → 42d | 0% → 50% |
| 15 | 系统整体调试 |  | 2024-08-15 → 2024-08-30 (+15d) | 27d → 42d |  |
| 16 | 项目初验 | 2024-08-16 → 2024-08-31 (+15d) | 2024-09-15 → 2024-09-09 (-6d) | 31d → 10d |  |
